Schedule from MS Project, 2010-07-26 to 2011-01-03, A marks actual dates.
微软中国

## Calendars

- 标准: Mon-Fri 08:00-12:00, 13:00-17:00; Sat-Sun off. Exceptions (off unless hours are given): 2010-09-05, 2010-09-12, 2010-09-19 08:00-12:00, 13:00-17:00, 2010-09-22 to 2010-09-24, 2010-09-25 to 2010-09-26 08:00-12:00, 13:00-17:00, 2010-10-01 to 2010-10-07, 2010-10-09 08:00-12:00, 13:00-17:00.

## Resources

| Resource |
| --- |
| 章昕 |
| 徐鹏 |
| 张琦 |
| 胡立军 |
| 姜浩 |
| 蓝雪 |
| 黄伟青 |
| 黄伟青? |
| 赵炯 |
| 邓玭赵炯 |
| 片头loading 画面 |
| 邓玭 |
| 全部组员 |
| 7788 |

## Schedule

| ID | WBS | Task | Duration | Start | Finish | Predecessors | Complete | Remaining | Total slack | Free slack | Constraint | Resources | Work | Actual work |
| --- | --- | --- | --- | --- | --- | --- | --- | --- | --- | --- | --- | --- | --- | --- |
| 1 | 1 | **快乐魔法** | 112d? | 2010-07-26 A | 2011-01-03 |  | 26% | 83d? | 0d |  |  |  | 5370.4h | 899.54h |
| 2 | 1.1 | **项目启动** | 20d? | 2010-07-26 A | 2010-08-20 |  | 68% | 6.37d? | 92d |  |  |  | 680.8h | 359.69h |
| 3 | 1.1.1 | 基本策划 | 8d? | 2010-07-26 A | 2010-08-04 |  | 90% | 0.8d? | 0d |  | finish no earlier than 2010-08-04 | 姜浩 | 64h | 57.6h |
| 4 | 1.1.2 | 策划讨论 | 2d? | 2010-08-05 A | 2010-08-06 | 3 | 80% | 0.4d? | 91.2d | 0d |  | 全部组员; 姜浩 | 17.6h | 14.4h |
| 5 | 1.1.3 | **美术ui** | 4d? | 2010-08-09 A | 2010-08-12 | 4 | 80% | 0.8d? | 98d |  |  | 姜浩 | 63.2h | 37.6h |
| 6 | 1.1.3.1 | loading动效 | 2d? | 2010-08-09 A | 2010-08-10 |  | 80% | 0.4d? | 90d |  | finish no earlier than 2010-08-10 | 姜浩 | 15.2h | 12h |
| 7 | 1.1.3.2 | 主菜单 | 1d? | 2010-08-11 A | 2010-08-11 |  | 80% | 0.2d? | 88.8d | 0d |  | 姜浩 | 8h | 6.4h |
| 8 | 1.1.3.3 | 场景切换动画 | 1d? | 2010-08-12 A | 2010-08-12 | 7 | 80% | 0.2d? | 88d |  |  | 姜浩 | 8h | 6.4h |
| 9 | 1.1.4 | **前台框架** | 10d? | 2010-08-09 A | 2010-08-20 |  | 55% | 4.53d? | 92d |  |  | 徐鹏; 张琦 | 320h | 122.09h |
| 10 | 1.1.4.1 | 初始化 | 4d | 2010-08-09 A | 2010-08-12 |  | 80% | 0.8d | 88d |  | start no earlier than 2010-08-03 | 张琦 | 32h | 25.6h |
| 11 | 1.1.4.2 | 基本场景 | 5d | 2010-08-09 A | 2010-08-13 |  | 80% | 1d | 87d |  |  | 徐鹏 | 40h | 32h |
| 12 | 1.1.4.3 | 主UI框架 | 3d | 2010-08-13 A | 2010-08-17 |  | 70% | 0.9d | 82d | 0d | start no earlier than 2010-08-11 | 张琦 | 24h | 16.8h |
| 13 | 1.1.4.4 | **其它UI模块** | 3d? | 2010-08-18 | 2010-08-20 | 12 |  |  | 92d |  |  | 张琦 | 64h |  |
| 14 | 1.1.4.4.1 | 用户信息 | 1d? | 2010-08-18 | 2010-08-18 |  |  |  | 82d | 0d | start no earlier than 2010-08-17 | 张琦 | 8h |  |
| 15 | 1.1.4.4.2 | 场景切换表现 | 1d? | 2010-08-19 | 2010-08-19 | 14 |  |  | 82d | 0d |  | 张琦 | 8h |  |
| 16 | 1.1.4.4.3 | 好友模块 | 1d? | 2010-08-20 | 2010-08-20 | 15 |  |  | 82d |  |  | 张琦 | 8h |  |
| 17 | 1.1.4.4.4 | 升级相关 | 1d? | 2010-08-20 | 2010-08-20 | 15 |  |  | 82d |  | start no earlier than 2010-08-13 | 张琦 | 8h |  |
| 18 | 1.1.4.4.5 | 音效模块 | 1d? | 2010-08-20 | 2010-08-20 | 15 |  |  | 82d |  |  | 张琦 | 8h |  |
| 19 | 1.1.5 | **后台框架** | 10d? | 2010-08-09 A | 2010-08-20 |  | 67% | 3.33d? | 92d |  |  | 章昕 | 216h | 128h |
| 20 | 1.1.5.1 | db设计讨论 | 5d | 2010-08-09 A | 2010-08-13 |  | 80% | 1d | 85d | 0d | finish no earlier than 2010-08-13 | 胡立军; 章昕 | 80h | 64h |
| 21 | 1.1.5.2 | db表基本数据导入 | 2d? | 2010-08-16 | 2010-08-17 | 20 |  |  | 85d |  | finish no earlier than 2010-08-16 | 章昕 | 16h |  |
| 22 | 1.1.5.3 | src底层框架架构 | 5d? | 2010-08-16 A | 2010-08-20 | 20 | 80% | 1d? | 82d |  |  | 章昕 | 40h | 32h |
| 23 | 1.2 | **DIY模块** | 27d? | 2010-08-09 A | 2010-09-14 |  | 56% | 11.92d? | 75d |  |  |  | 608.8h | 194.4h |
| 24 | 1.2.1 | 策划&策划讨论 | 3d? | 2010-08-09 A | 2010-08-11 |  | 80% | 0.6d? | 0d |  | finish no earlier than 2010-08-11 | 全部组员; 姜浩 | 26.4h | 21.6h |

Notes:
- 11: check看样
- 21: 数值需要等待策划确定后导入

| ID | WBS | Task | Duration | Start | Finish | Predecessors | Complete | Remaining | Total slack | Free slack | Constraint | Resources | Work | Actual work |
| --- | --- | --- | --- | --- | --- | --- | --- | --- | --- | --- | --- | --- | --- | --- |
| 25 | 1.2.2 | **美术ui** | 2d? | 2010-08-12 A | 2010-08-13 |  | 80% | 0.4d? | 97d |  |  | 姜浩 | 40h | 27.2h |
| 26 | 1.2.2.1 | DIY时道具箱\翻转按钮 | 2d | 2010-08-12 A | 2010-08-13 | 24 | 80% | 0.4d | 82.5d |  |  | 姜浩 | 16h | 12.8h |
| 27 | 1.2.2.2 | DIY开发用基本素材 | 1d? | 2010-08-13 A | 2010-08-13 |  | 80% | 0.2d? | 82.5d |  | start no earlier than 2010-08-13 | 姜浩 | 8h | 6.4h |
| 28 | 1.2.3 | **前台开发** | 17d? | 2010-08-12 A | 2010-09-03 | 24 | 67% | 5.59d? | 82d |  |  | 徐鹏 | 310.4h | 113.6h |
| 29 | 1.2.3.1 | 道具UI | 3d | 2010-08-12 A | 2010-08-16 A |  | 100% |  |  |  | finish no earlier than 2010-08-11 | 徐鹏 | 24h | 24h |
| 30 | 1.2.3.2 | 拖动 | 3d | 2010-08-17 A | 2010-08-19 A | 29 | 100% |  |  |  | start no earlier than 2010-08-12 | 徐鹏 | 24h | 24h |
| 31 | 1.2.3.3 | 数据结构确定 | 2d | 2010-08-20 A | 2010-08-23 A | 30 | 100% |  |  |  | start no earlier than 2010-08-16 | 徐鹏 | 16h | 16h |
| 32 | 1.2.3.4 | 基本建筑放置&放置后动画效果及属性加成 | 3d | 2010-08-24 A | 2010-08-26 A | 31 | 100% |  |  |  |  | 徐鹏 | 24h | 24h |
| 33 | 1.2.3.5 | 墙壁和地板放置替换 | 1d | 2010-08-27 A | 2010-08-27 A | 32 | 100% |  |  |  | start no earlier than 2010-08-24 | 徐鹏 | 8h | 8h |
| 34 | 1.2.3.6 | 道具分类切换 | 1d? | 2010-08-30 A | 2010-08-30 | 33 | 50% | 0.5d? | 0d |  |  | 徐鹏 | 8h | 4h |
| 35 | 1.2.3.7 | 物品的镜像处理 | 2d | 2010-08-31 | 2010-09-01 | 34 |  |  | 0d |  |  | 徐鹏 | 16h |  |
| 36 | 1.2.3.8 | 分解 | 1d? | 2010-08-12 | 2010-08-12 |  |  |  | 83.5d |  |  |  |  |  |
| 37 | 1.2.3.9 | ui模块的整合 | 2d | 2010-09-02 A | 2010-09-03 | 35 | 5% | 1.9d | 67.5d |  |  | 徐鹏; 张琦 | 30.4h | 1.6h |
| 38 | 1.2.3.10 | 墙上装饰 | 0.5d | 2010-08-12 A | 2010-08-12 A |  | 100% |  |  |  |  | 徐鹏 | 4h | 4h |
| 39 | 1.2.3.11 | 大背景 | 0.5d | 2010-08-12 | 2010-08-12 | 38 |  |  | 82.5d | 0d |  | 徐鹏 | 4h |  |
| 40 | 1.2.3.12 | 背包物品叠加 | 1d | 2010-08-13 | 2010-08-13 | 39 |  |  | 82.5d |  |  | 徐鹏 | 8h |  |
| 41 | 1.2.3.13 | 地板墙壁的重复铺设 | 1d? | 2010-08-16 A | 2010-08-16 A | 40 | 100% |  |  |  |  | 徐鹏 | 8h | 8h |
| 42 | 1.2.4 | **后台开发** | 5d? | 2010-08-19 A | 2010-08-25 | 24 | 80% | 1d? | 81d | 6d |  |  | 40h | 32h |
| 43 | 1.2.4.1 | 物品放置保存api | 2d | 2010-08-19 A | 2010-08-20 |  | 80% | 0.4d | 68.9d | 0d | start no earlier than 2010-08-19 | 章昕 | 16h | 12.8h |
| 44 | 1.2.4.2 | 物品取出api | 1d? | 2010-08-23 A | 2010-08-23 | 43 | 80% | 0.2d? | 68.1d | 0d |  | 章昕 | 8h | 6.4h |
| 45 | 1.2.4.3 | 地板特殊处理 | 1d? | 2010-08-24 A | 2010-08-24 | 44 | 80% | 0.2d? | 67.3d | 0d |  | 章昕 | 8h | 6.4h |
| 46 | 1.2.4.4 | 数据存储合法性check | 1d? | 2010-08-25 A | 2010-08-25 | 45 | 80% | 0.2d? | 66.5d |  |  | 章昕 | 8h | 6.4h |
| 47 | 1.2.5 | **DIY前后端对接** | 8d? | 2010-09-03 | 2010-09-14 | 42 |  |  | 75d |  |  | 徐鹏; 张琦; 章昕 | 192h |  |
| 48 | 1.2.5.1 | 前端配合 | 1d? | 2010-09-07 | 2010-09-07 |  |  |  | 64.5d | 4d | start no earlier than 2010-09-07 |  |  |  |
| 49 | 1.2.5.2 | 后端配合 | 7d? | 2010-09-03 | 2010-09-13 |  |  |  | 60.5d | 0d | start no earlier than 2010-09-03 |  |  |  |
| 50 | 1.2.5.3 | 前后端对接 | 1d? | 2010-09-14 | 2010-09-14 | 49, 48 |  |  | 60.5d |  | start no earlier than 2010-09-13 |  |  |  |

Notes:
- 38: 在学生流程完成后微调
- 39: 在学生流程完成后微调
- 40: 在学生流程完成后微调
- 41: 在学生流程完成后微调
- 47: 后台提供接口 / 美术提供diy资源 / 9月6日 章昕手中有雅虎的任务 推迟半天。 / 9月7日后端解构设计改动 推迟2天 章昕有雅虎任务
- 49: 章昕 有雅虎任务

| ID | WBS | Task | Duration | Start | Finish | Predecessors | Complete | Remaining | Total slack | Free slack | Constraint | Resources | Work | Actual work |
| --- | --- | --- | --- | --- | --- | --- | --- | --- | --- | --- | --- | --- | --- | --- |
| 51 | 1.3 | **传送门模块** | 21.5d? | 2010-09-03 A | 2010-10-09 |  | 63% | 7.85d? | 61.5d |  |  |  | 404.8h | 184.36h |
| 52 | 1.3.1 | **策划** | 2d? | 2010-09-03 A | 2010-09-06 A |  | 100% |  |  |  |  | 姜浩 | 48h | 48h |
| 53 | 1.3.1.1 | 策划细节 | 1.12d? | 2010-09-05 A | 2010-09-05 A |  | 100% |  |  |  |  | 姜浩 [88.9%] | 8h | 8h |
| 54 | 1.3.1.2 | 流程图 | 1d? | 2010-09-06 A | 2010-09-06 A |  | 100% |  |  |  |  | 姜浩 | 8h | 8h |
| 55 | 1.3.1.3 | DEMO | 1d? | 2010-09-03 A | 2010-09-03 A |  | 100% |  |  |  |  | 姜浩 | 8h | 8h |
| 56 | 1.3.1.4 | 数值框架 | 1.12d? | 2010-09-05 A | 2010-09-05 A |  | 100% |  |  |  |  | 姜浩 [88.9%] | 8h | 8h |
| 57 | 1.3.2 | 门放人前后端准备工作 | 1d? | 2010-09-19 | 2010-09-19 |  |  |  | 71d |  | start no earlier than 2010-09-19 |  |  |  |
| 58 | 1.3.3 | **前端** | 17.5d? | 2010-09-09 A | 2010-10-09 |  | 48% | 9.04d? | 61.5d |  |  | 徐鹏 | 300.8h | 94.36h |
| 59 | 1.3.3.1 | 寻路算法 | 2d | 2010-09-09 A | 2010-09-10 A |  | 100% |  |  |  | start no earlier than 2010-09-09 | 徐鹏 | 16h | 16h |
| 60 | 1.3.3.2 | DIY联调 | 3.1d? | 2010-09-13 A | 2010-09-17 | 59 | 95% | 0.15d? | 72.9d |  | finish no earlier than 2010-09-16 | 徐鹏; 章昕 | 24.8h | 23.56h |
| 61 | 1.3.3.3 | 人物代码设计 | 1d | 2010-09-17 A | 2010-09-17 A | 60 | 100% |  |  |  | finish no earlier than 2010-09-17 | 徐鹏 | 8h | 8h |
| 62 | 1.3.3.4 | **学生走动** | 4d | 2010-09-19 A | 2010-09-25 |  | 70% | 1.2d | 53d |  |  | 徐鹏 | 64h | 44.8h |
| 63 | 1.3.3.4.1 | 动画播放 | 4d | 2010-09-19 A | 2010-09-25 | 61 | 70% | 1.2d | 53d | 0d | finish no earlier than 2010-09-25 | 徐鹏 | 32h | 22.4h |
| 64 | 1.3.3.5 | **放人** | 2.5d? | 2010-09-26 | 2010-09-28 |  |  |  | 53d |  |  | 徐鹏 | 40h |  |
| 65 | 1.3.3.5.1 | 门动画 | 0.5d | 2010-09-26 | 2010-09-26 | 63 |  |  | 53d | 0d | start no earlier than 2010-09-20 | 徐鹏 | 4h |  |
| 66 | 1.3.3.5.2 | 门计时 | 1d? | 2010-09-26 | 2010-09-27 | 65 |  |  | 53d | 0d | start no earlier than 2010-09-19 | 徐鹏 | 8h |  |
| 67 | 1.3.3.5.3 | 学生 | 1d? | 2010-09-27 | 2010-09-28 | 66 |  |  | 53d | 0d |  | 徐鹏 | 8h |  |
| 68 | 1.3.3.6 | 确认框\飘屏\tips | 2.5d | 2010-09-28 | 2010-09-30 | 67 |  |  | 53d | 0d | start no earlier than 2010-09-20 | 徐鹏 | 20h |  |
| 69 | 1.3.3.7 | 用户和场景信息面板 | 1d? | 2010-09-26 | 2010-09-26 |  |  |  | 66.5d | 0d | start no earlier than 2010-09-26 | 张琦 | 8h |  |
| 70 | 1.3.3.8 | loading表现 | 0.5d | 2010-09-27 | 2010-09-27 | 69 |  |  | 66.5d |  |  | 张琦 | 4h |  |
| 71 | 1.3.3.9 | 前后端联调 | 1.5d? | 2010-10-08 | 2010-10-09 | 68 |  |  | 53d | 0d | start no earlier than 2010-09-28 | 章昕; 徐鹏 | 24h |  |
| 72 | 1.3.4 | **美术** | 2d? | 2010-09-06 A | 2010-09-07 |  | 99% | 0d? | 0d |  |  | 赵炯 | 32h | 18h |
| 73 | 1.3.4.1 | 基本场景美术素材 | 1d? | 2010-09-06 A | 2010-09-06 A |  | 100% |  |  |  |  | 姜浩 | 8h | 8h |
| 74 | 1.3.4.2 | 相关UI | 1d? | 2010-09-07 A | 2010-09-07 A |  | 100% |  |  |  |  | 赵炯 | 8h | 8h |

Notes:
- 56: 后期做调整
- 60: 9月14日搬服务器 联调时间 延后一天 无服务器

| ID | WBS | Task | Duration | Start | Finish | Predecessors | Complete | Remaining | Total slack | Free slack | Constraint | Resources | Work | Actual work |
| --- | --- | --- | --- | --- | --- | --- | --- | --- | --- | --- | --- | --- | --- | --- |
| 75 | 1.3.5 | **后端** | 3d | 2010-09-15 A | 2010-09-17 A |  | 100% |  |  |  |  | 章昕 | 24h | 24h |
| 76 | 1.3.5.1 | 传送门时间计算 | 1.5d | 2010-09-15 A | 2010-09-16 A | 52, 47, 50 | 100% |  |  |  |  | 章昕 | 12h | 12h |
| 77 | 1.3.5.2 | 接待客人 | 1.5d | 2010-09-16 A | 2010-09-17 A | 76 | 100% |  |  |  |  | 章昕 | 12h | 12h |
| 78 | 1.4 | **学生模块** | 46d? | 2010-09-08 A | 2010-11-16 |  | 10% | 41.53d? | 34d |  |  |  | 1344h | 121.1h |
| 79 | 1.4.1 | **策划** | 4d? | 2010-09-08 A | 2010-09-13 A |  | 100% |  |  |  |  |  | 32h | 32h |
| 80 | 1.4.1.1 | 策划细节+讨论 | 1d | 2010-09-08 A | 2010-09-08 A |  | 100% |  |  |  | start no earlier than 2010-09-08 | 姜浩 | 8h | 8h |
| 81 | 1.4.1.2 | 流程图 | 1d | 2010-09-09 A | 2010-09-09 A | 80 | 100% |  |  |  |  | 姜浩 | 8h | 8h |
| 82 | 1.4.1.3 | DEMO | 1d? | 2010-09-10 A | 2010-09-10 A | 81 | 100% |  |  |  |  | 姜浩 | 8h | 8h |
| 83 | 1.4.1.4 | 数值表框架 | 1d? | 2010-09-13 A | 2010-09-13 A | 82 | 100% |  |  |  | start no earlier than 2010-09-10 | 姜浩 | 8h | 8h |
| 84 | 1.4.2 | **美术** | 3d? | 2010-09-08 A | 2010-09-10 |  | 83% | 0.5d? | 77d |  |  | 姜浩 | 72h | 64h |
| 85 | 1.4.2.1 | 课程面板 | 1d | 2010-09-08 A | 2010-09-08 A |  | 100% |  |  |  | finish no earlier than 2010-08-09 | 赵炯 | 8h | 8h |
| 86 | 1.4.2.2 | 魔法图标 30个 | 1d? | 2010-09-08 A | 2010-09-08 A |  | 100% |  |  |  | finish no earlier than 2010-08-09 | 姜浩 | 8h | 8h |
| 87 | 1.4.2.3 | 学生流程动效30个 | 1d | 2010-09-08 A | 2010-09-08 A |  | 100% |  |  |  | start no earlier than 2010-08-25 | 姜浩 | 8h | 8h |
| 88 | 1.4.2.4 | 课桌状态 | 1d? | 2010-09-08 A | 2010-09-08 A |  | 100% |  |  |  |  | 姜浩 | 8h | 8h |
| 89 | 1.4.2.5 | 相关UI | 1d? | 2010-09-10 A | 2010-09-10 A | 85 | 100% |  |  |  | finish no earlier than 2010-09-10 | 赵炯 | 8h | 8h |
| 90 | 1.4.2.6 | 其他小动效 | 1d | 2010-09-09 | 2010-09-09 |  |  |  | 78d |  | start no earlier than 2010-09-09 | 姜浩 | 8h |  |
| 91 | 1.4.3 | **前台开发** | 27.5d? | 2010-10-09 A | 2010-11-16 |  | 1% | 27.2d? | 34d |  |  | 徐鹏 | 1020h | 10.43h |
| 92 | 1.4.3.1 | **主角** | 4.5d? | 2010-10-09 | 2010-10-14 |  |  |  | 53d |  |  | 徐鹏 | 72h |  |
| 93 | 1.4.3.1.1 | 主角形像 | 1.5d | 2010-10-09 | 2010-10-11 | 71 |  |  | 53d | 0d | start no earlier than 2010-09-20 | 徐鹏 | 12h |  |
| 94 | 1.4.3.1.2 | 主角行动队列 | 2d | 2010-10-12 | 2010-10-13 | 93 |  |  | 53d | 0d | start no earlier than 2010-09-25 | 徐鹏 | 16h |  |
| 95 | 1.4.3.1.3 | 主角教魔法表现 | 1d? | 2010-10-14 | 2010-10-14 | 94 |  |  | 53d | 0d |  | 徐鹏 | 8h |  |
| 96 | 1.4.3.2 | 课桌状态动画 | 0.5d | 2010-10-15 | 2010-10-15 | 95 |  |  | 53d | 0d | start no earlier than 2010-09-26 | 徐鹏 | 4h |  |
| 97 | 1.4.3.3 | 学生需求表现 | 0.5d | 2010-10-15 | 2010-10-15 | 96 |  |  | 53d | 0d | start no earlier than 2010-09-27 | 徐鹏 | 4h |  |
| 98 | 1.4.3.4 | 魔法列表模块 | 2d | 2010-10-18 | 2010-10-19 | 97 |  |  | 53d | 0d | start no earlier than 2010-09-28 | 徐鹏 | 16h |  |
| 99 | 1.4.3.5 | 传授 | 1d | 2010-10-20 | 2010-10-20 | 98 |  |  | 53d |  | start no earlier than 2010-09-27 | 徐鹏 | 8h |  |
| 100 | 1.4.3.6 | 课桌tips | 1d? | 2010-10-21 A | 2010-10-21 A | 99 | 100% |  |  |  | start no earlier than 2010-10-08 | 徐鹏 | 8h | 8h |

Notes:
- 80: 细节完成 后续添加
- 81: 要做修改
- 87: 保证基本后续添加
- 88: 装饰物相关

| ID | WBS | Task | Type | Duration | Start | Finish | Predecessors | Total slack | Free slack | Constraint | Resources | Work |
| --- | --- | --- | --- | --- | --- | --- | --- | --- | --- | --- | --- | --- |
| 101 | 1.4.3.7 | **学习中** |  | 0.5d | 2010-10-22 | 2010-10-22 | 100 | 0d |  |  | 徐鹏 | 16h |
| 102 | 1.4.3.7.1 | 学生学习中状态 |  | 0.5d | 2010-10-22 | 2010-10-22 |  | 0d |  |  | 徐鹏 | 4h |
| 103 | 1.4.3.7.2 | 学生中断状态 |  | 0.5d | 2010-10-22 | 2010-10-22 |  | 0d |  |  | 徐鹏 | 4h |
| 104 | 1.4.3.7.3 | 中断处理 |  | 0.5d | 2010-10-22 | 2010-10-22 |  | 0d |  |  | 徐鹏 | 4h |
| 105 | 1.4.3.8 | **学习完成** |  | 3d | 2010-10-22 | 2010-10-27 | 101 | 0d |  |  | 徐鹏 | 64h |
| 106 | 1.4.3.8.1 | 完成状态 |  | 2d | 2010-10-22 | 2010-10-26 |  | 1d | 0d | start no earlier than 2010-10-10 | 徐鹏 | 16h |
| 107 | 1.4.3.8.2 | 收获过期时表现 |  | 3d | 2010-10-22 | 2010-10-27 |  | 0d |  | start no earlier than 2010-10-11 | 徐鹏 | 24h |
| 108 | 1.4.3.8.3 | 收获 | milestone | 0d | 2010-10-26 | 2010-10-26 | 106 | 1d |  | finish no earlier than 2010-10-14 | 徐鹏 |  |
| 109 | 1.4.3.9 | 好友场景实现 |  | 1d? | 2010-10-27 | 2010-10-28 | 105 | 0d |  | start no earlier than 2010-10-15 | 徐鹏 | 8h |
| 110 | 1.4.3.10 | 前后端联调 |  | 1.5d | 2010-10-28 | 2010-10-29 | 109 | 0d |  | start no earlier than 2010-10-18 | 章昕; 徐鹏 | 24h |
| 111 | 1.4.3.11 | **BUG修正** |  | 3d? | 2010-11-05 | 2010-11-09 |  | 39d |  |  |  | 24h |
| 112 | 1.4.3.11.1 | 收获水晶和经验 飘字 |  | 3d? | 2010-11-05 | 2010-11-09 |  | 39d |  | finish no earlier than 2010-11-09 | 徐鹏 | 24h |
| 113 | 1.4.3.12 | 动态加载的SWF文件路径没有使用staticHost |  | 3d? | 2010-11-05 | 2010-11-09 |  | 39d |  | finish no earlier than 2010-11-09 | 徐鹏 | 24h |
| 114 | 1.4.3.13 | 扣除魔法时获得经验，经验条魔法条飘屏表现 |  | 3d? | 2010-11-05 | 2010-11-09 |  | 39d |  | finish no earlier than 2010-11-09 | 张琦 | 24h |
| 115 | 1.4.3.14 | 施法中断 |  | 3d? | 2010-11-05 | 2010-11-09 |  | 39d |  | finish no earlier than 2010-11-09 | 徐鹏 | 24h |
| 116 | 1.4.3.15 | 关闭魔法课程后 主界面UI消失 |  | 3d? | 2010-11-05 | 2010-11-09 |  | 39d |  | finish no earlier than 2010-11-09 | 张琦 | 24h |
| 117 | 1.4.3.16 | 学生学习魔法时，桌子不可DIY |  | 3d? | 2010-11-05 | 2010-11-09 |  | 39d |  | finish no earlier than 2010-11-09 | 徐鹏 | 24h |
| 118 | 1.4.3.17 | 深度排序问题 |  | 6d? | 2010-11-09 | 2010-11-16 |  | 34d |  | finish no earlier than 2010-11-16 | 徐鹏 | 48h |
| 119 | 1.4.3.18 | 队列以及，主角的表现与控制 |  | 6d? | 2010-11-09 | 2010-11-16 |  | 34d |  | finish no earlier than 2010-11-16 | 徐鹏 | 48h |
| 120 | 1.4.3.19 | 场景中的人数\水晶等用户信息没有在DIY等操作后改变 |  | 6d? | 2010-11-09 | 2010-11-16 |  | 34d |  | finish no earlier than 2010-11-16 | 徐鹏 | 48h |
| 121 | 1.4.3.20 | 鼠标划过收获的水晶\diy保存按钮\。需要设置buttonMode |  | 6d? | 2010-11-09 | 2010-11-16 |  | 34d |  | finish no earlier than 2010-11-16 | 徐鹏 | 48h |
| 122 | 1.4.3.21 | 地板和墙面可以考虑先行渲染,完成后再渲染可能会有动画的装饰物,最后渲染人物 |  | 6d? | 2010-11-09 | 2010-11-16 |  | 34d |  | finish no earlier than 2010-11-16 | 徐鹏 | 48h |
| 123 | 1.4.3.22 | 门放人后，门的信息的改变 |  | 6d? | 2010-11-09 | 2010-11-16 |  | 34d |  | finish no earlier than 2010-11-16 | 徐鹏 | 48h |
| 124 | 1.4.3.23 | 闲逛学生会走到已有人的位子上,然后走到时报错 |  | 6d? | 2010-11-09 | 2010-11-16 |  | 34d |  | finish no earlier than 2010-11-16 | 徐鹏 | 48h |
| 125 | 1.4.3.24 | DIY取消按钮无响应 |  | 6d? | 2010-11-09 | 2010-11-16 |  | 34d |  | finish no earlier than 2010-11-16 | 徐鹏 | 48h |
| 126 | 1.4.3.25 | 门上的汽泡位置需在门位图完成后纠正位置 |  | 6d? | 2010-11-09 | 2010-11-16 |  | 34d |  | finish no earlier than 2010-11-16 | 徐鹏 | 48h |

Notes:
- 112: *
- 113: *
- 114: *
- 115: *
- 116: *
- 117: *
- 118: ！
- 119: ！
- 120: ！
- 121: ！
- 122: ！
- 123: ！
- 124: ？
- 125: ？
- 126: ？

| ID | WBS | Task | Duration | Start | Finish | Predecessors | Complete | Remaining | Total slack | Free slack | Constraint | Resources | Work | Actual work |
| --- | --- | --- | --- | --- | --- | --- | --- | --- | --- | --- | --- | --- | --- | --- |
| 127 | 1.4.4 | **后台开发** | 20d? | 2010-09-19 A | 2010-10-21 |  | 7% | 18.67d? | 35d |  |  | 章昕 | 220h | 14.67h |
| 128 | 1.4.4.1 | 魔法学习 | 0.5d? | 2010-09-19 A | 2010-09-19 A | 77 | 100% |  |  |  | start no earlier than 2010-09-13 | 章昕 | 4h | 4h |
| 129 | 1.4.4.2 | 获取水晶(自己，好友) | 2d | 2010-09-25 | 2010-09-26 | 128 |  |  | 36d | 0d | start no earlier than 2010-09-25 | 章昕 | 16h |  |
| 130 | 1.4.4.3 | 人物升级 | 1d | 2010-09-27 | 2010-09-27 | 129 |  |  | 36d | 0d |  | 章昕 | 8h |  |
| 131 | 1.4.4.4 | 传授魔法(正常，异常) | 1d | 2010-09-28 | 2010-09-28 | 130 |  |  | 36d | 0d |  | 章昕 | 8h |  |
| 132 | 1.4.4.5 | 装饰物改变魔法值及恢复计算 | 1d | 2010-09-29 | 2010-09-29 | 131 |  |  | 36d | 1d | start no earlier than 2010-09-21 | 章昕 | 8h |  |
| 133 | 1.4.4.6 | 前后端联调 | 2d | 2010-10-20 | 2010-10-21 | 181 |  |  | 35d | 7d | start no earlier than 2010-10-20 | 章昕 | 16h |  |
| 134 | 1.5 | **魔法技能模块** | 46d? | 2010-09-10 A | 2010-11-18 |  | 16% | 38.46d? | 32d |  |  |  | 300h | 40h |
| 135 | 1.5.1 | **策划** | 3d? | 2010-09-13 A | 2010-09-15 |  | 60% | 1.2d? | 72d |  |  |  | 40h | 24h |
| 136 | 1.5.1.1 | 策划细节+讨论 | 1d | 2010-09-13 A | 2010-09-13 A |  | 100% |  |  |  | finish no earlier than 2010-09-13 | 姜浩 | 8h | 8h |
| 137 | 1.5.1.2 | 流程图 | 1d? | 2010-09-13 A | 2010-09-13 A | 136 | 100% |  |  |  |  | 姜浩 | 8h | 8h |
| 138 | 1.5.1.3 | 数值表框架 | 1d? | 2010-09-13 A | 2010-09-13 A |  | 100% |  |  |  | start no earlier than 2010-09-14 | 姜浩 | 8h | 8h |
| 139 | 1.5.1.4 | DEMO | 2d? | 2010-09-14 | 2010-09-15 | 83 |  |  | 72d | 1d | finish no earlier than 2010-09-14 | 姜浩 | 16h |  |
| 140 | 1.5.2 | **前端** | 14d? | 2010-11-01 | 2010-11-18 |  |  |  | 0d |  |  |  | 156h |  |
| 141 | 1.5.2.1 | **变形术** | 4d? | 2010-11-01 | 2010-11-04 | 110 |  |  | 0d |  |  | 徐鹏 | 64h |  |
| 142 | 1.5.2.1.1 | 使用魔法流程 | 3d | 2010-11-01 | 2010-11-03 |  |  |  | 0d |  | start no earlier than 2010-10-19 | 徐鹏 | 24h |  |
| 143 | 1.5.2.1.2 | 变形术信息 | 1d? | 2010-11-04 | 2010-11-04 | 142 |  |  | 0d |  |  | 徐鹏 | 8h |  |
| 144 | 1.5.2.2 | **合成** | 3.5d? | 2010-11-05 | 2010-11-10 | 141 |  |  | 0d |  |  | 徐鹏 | 28h |  |
| 145 | 1.5.2.2.1 | 合成术信息 | 2.5d | 2010-11-05 | 2010-11-09 |  |  |  | 0d |  |  |  |  |  |
| 146 | 1.5.2.2.2 | 合成流程 | 1d? | 2010-11-09 | 2010-11-10 | 145 |  |  | 0d |  |  |  |  |  |
| 147 | 1.5.2.3 | 教学魔法 | 2d | 2010-11-10 | 2010-11-12 | 144 |  |  | 0d |  |  | 徐鹏 | 16h |  |
| 148 | 1.5.2.4 | 列表组件 | 2d | 2010-11-12 | 2010-11-16 | 147 |  |  | 0d |  |  | 徐鹏 | 16h |  |
| 149 | 1.5.2.5 | 合成/变形成功面板 | 1d? | 2010-11-16 | 2010-11-17 | 148 |  |  | 0d |  |  | 徐鹏 | 8h |  |
| 150 | 1.5.2.6 | 前后端联调 | 1.5d | 2010-11-17 | 2010-11-18 | 149 |  |  | 0d |  | start no earlier than 2010-11-03 | 徐鹏; 章昕 | 24h |  |

Notes:
- 129: 19 20 21 日 雅虎工作 延迟3天
- 132: 22 23 24 中秋
- 136: 后续需要调整
- 137: 后续需要调整
- 138: 后续需要调整
- 144: 国庆节
- 149: 1.得到道具 / 2.确认关闭

| ID | WBS | Task | Duration | Start | Finish | Predecessors | Complete | Remaining | Total slack | Free slack | Constraint | Resources | Work | Actual work |
| --- | --- | --- | --- | --- | --- | --- | --- | --- | --- | --- | --- | --- | --- | --- |
| 151 | 1.5.3 | **后端** | 30.5d | 2010-10-08 | 2010-11-18 |  |  |  | 32.5d |  |  |  | 48h |  |
| 152 | 1.5.3.1 | 合成 | 2d | 2010-10-08 | 2010-10-12 | 132 |  |  | 35d | 0d | finish no earlier than 2010-10-12 | 章昕 | 16h |  |
| 153 | 1.5.3.2 | 变化术 | 1d | 2010-10-13 | 2010-10-13 | 152 |  |  | 35d | 0d |  | 章昕 | 8h |  |
| 154 | 1.5.3.3 | 前后端联调 | 1.5d | 2010-11-17 | 2010-11-18 |  |  |  | 32.5d |  | start no earlier than 2010-11-17 | 章昕; 徐鹏 | 24h |  |
| 155 | 1.5.4 | **美术** | 7d? | 2010-09-10 A | 2010-09-19 |  | 29% | 5d? | 64d |  |  |  | 56h | 16h |
| 156 | 1.5.4.1 | 魔法书界面UI | 1d? | 2010-09-10 A | 2010-09-10 A |  | 100% |  |  |  | start no earlier than 2010-09-10 | 赵炯 | 8h | 8h |
| 157 | 1.5.4.2 | 弹出框UI | 1d? | 2010-09-13 A | 2010-09-13 A | 156 | 100% |  |  |  |  | 赵炯 | 8h | 8h |
| 158 | 1.5.4.3 | 鼠标指针UI | 1d? | 2010-09-13 | 2010-09-13 |  |  |  | 63d | 0d | start no earlier than 2010-09-13 | 赵炯 | 8h |  |
| 159 | 1.5.4.4 | 合成术动效 | 1d? | 2010-09-15 | 2010-09-15 |  |  |  | 64d | 0d | start no earlier than 2010-09-15 | 姜浩 | 8h |  |
| 160 | 1.5.4.5 | 变化术动效 | 1d? | 2010-09-16 | 2010-09-16 | 159 |  |  | 64d | 0d |  | 姜浩 | 8h |  |
| 161 | 1.5.4.6 | 魔法技能动效 | 2d | 2010-09-17 | 2010-09-19 | 160 |  |  | 64d | 9d |  | 姜浩 | 16h |  |
| 162 | 1.6 | **水晶交换** | 49d? | 2010-09-16 A | 2010-11-29 |  | 6% | 45.84d? | 25d |  |  |  | 368h |  |
| 163 | 1.6.1 | **策划** | 3d? | 2010-09-16 | 2010-09-19 |  |  |  | 71d |  |  |  |  |  |
| 164 | 1.6.1.1 | 策划详细 | 1d? | 2010-09-17 | 2010-09-17 | 139, 165 |  |  | 71d | 0d | start no earlier than 2010-09-15 |  |  |  |
| 165 | 1.6.1.2 | 流程图 | 1d? | 2010-09-16 | 2010-09-16 |  |  |  | 71d | 0d | start no earlier than 2010-09-16 |  |  |  |
| 166 | 1.6.1.3 | DEMO | 1d? | 2010-09-19 | 2010-09-19 | 164 |  |  | 71d |  |  |  |  |  |
| 167 | 1.6.2 | **美术** | 1d? | 2010-09-16 A | 2010-09-16 A |  | 100% |  |  |  |  |  |  |  |
| 168 | 1.6.2.1 | 相关UI | 1d? | 2010-09-16 A | 2010-09-16 A |  | 100% |  |  |  |  |  |  |  |
| 169 | 1.6.3 | **前端** | 6.5d | 2010-11-19 | 2010-11-29 |  |  |  | 0d |  |  |  | 64h |  |
| 170 | 1.6.3.1 | 前端 | 5d | 2010-11-19 | 2010-11-25 | 150 |  |  | 0d |  | start no earlier than 2010-10-30 | 徐鹏 | 40h |  |
| 171 | 1.6.3.2 | 前后端联调 | 1.5d | 2010-11-26 | 2010-11-29 | 170 |  |  | 0d |  | finish no earlier than 2010-11-12 | 徐鹏; 章昕 | 24h |  |
| 172 | 1.6.4 | **后端** | 33d? | 2010-10-14 | 2010-11-29 |  |  |  | 25d |  |  | 章昕 | 304h |  |
| 173 | 1.6.4.1 | 发布和交换 | 1d | 2010-10-14 | 2010-10-14 | 153 |  |  | 35d | 0d | start no earlier than 2010-10-08 | 章昕 | 8h |  |
| 174 | 1.6.4.2 | 扩展 | 1d? | 2010-10-15 | 2010-10-15 | 173 |  |  | 35d | 0d |  | 章昕 | 8h |  |
| 175 | 1.6.4.3 | 时效过后自动回退 | 1d? | 2010-10-18 | 2010-10-18 | 174 |  |  | 35d | 0d | start no earlier than 2010-10-11 | 章昕 | 8h |  |
| 176 | 1.6.4.4 | 前后端联调 | 2d | 2010-11-26 | 2010-11-29 |  |  |  | 25d |  | start no earlier than 2010-11-26 | 章昕 | 16h |  |

Notes:
- 152: 调休一天 10月9日
- 159: 需要和程序讨论
- 160: 需要和程序讨论
- 161: 需要和程序讨论
- 168: 后续可能有修改

| ID | WBS | Task | Duration | Start | Finish | Predecessors | Total slack | Free slack | Constraint | Resources | Work |
| --- | --- | --- | --- | --- | --- | --- | --- | --- | --- | --- | --- |
| 177 | 1.7 | **好友交互模块** | 53d | 2010-09-14 | 2010-12-01 |  | 12d |  |  | 章昕 | 736h |
| 178 | 1.7.1 | 美术ui | 2d | 2010-09-14 | 2010-09-15 | 158 | 63d | 0d | start no earlier than 2010-09-14 | 赵炯 | 16h |
| 179 | 1.7.2 | 前台开发 | 1d | 2010-11-29 | 2010-11-30 | 171 | 0d |  | start no earlier than 2010-11-09 | 徐鹏 | 8h |
| 180 | 1.7.3 | **后台开发** | 32d | 2010-10-19 | 2010-12-01 |  | 4d |  |  | 章昕 | 288h |
| 181 | 1.7.3.1 | 解除好友异常魔法状态 | 1d | 2010-10-19 | 2010-10-19 | 175 | 35d | 0d | start no earlier than 2010-10-12 | 章昕 | 8h |
| 182 | 1.7.3.2 | 前后端联调 | 1.5d | 2010-11-30 | 2010-12-01 | 179 | 0d |  | finish no earlier than 2010-11-16 | 章昕; 徐鹏 | 24h |
| 183 | 1.8 | **道具模块** | 53.5d? | 2010-09-16 | 2010-12-06 |  | 14.5d |  |  |  | 84h |
| 184 | 1.8.1 | 策划细节 | 1d | 2010-09-28 | 2010-09-28 | 178 | 55d | 0d | finish no earlier than 2010-09-28 | 姜浩 | 8h |
| 185 | 1.8.2 | 流程图 | 1d? | 2010-09-29 | 2010-09-29 | 184 | 55d | 0d | start no earlier than 2010-09-29 |  |  |
| 186 | 1.8.3 | demo | 1d? | 2010-09-30 | 2010-09-30 | 185 | 55d | 0d |  |  |  |
| 187 | 1.8.4 | 数值调整 | 1d? | 2010-10-08 | 2010-10-08 | 186 | 55d | 0d |  |  |  |
| 188 | 1.8.5 | **美术ui** | 2d | 2010-09-16 | 2010-09-17 |  | 66d |  |  | 赵炯 | 32h |
| 189 | 1.8.5.1 | 道具 -15个 | 2d | 2010-09-16 | 2010-09-17 | 178 | 66d | 0d | start no earlier than 2010-09-15 | 赵炯 | 16h |
| 190 | 1.8.6 | 前台开发 | 2.5d | 2010-12-02 | 2010-12-06 | 182 | 0d |  | start no earlier than 2010-11-10 | 徐鹏 | 20h |
| 191 | 1.8.7 | **后台开发** | 1.5d? | 2010-11-02 | 2010-11-03 |  | 28d |  |  | 章昕 | 24h |
| 192 | 1.8.7.1 | 商店购买 | 1d? | 2010-11-02 | 2010-11-02 | 133 | 28d | 0d | finish no earlier than 2010-11-02 | 章昕 | 8h |
| 193 | 1.8.7.2 | 药水使用 | 0.5d | 2010-11-03 | 2010-11-03 | 192 | 28d | 0d |  | 章昕 | 4h |
| 194 | 1.9 | **消息日志模块** | 55d? | 2010-09-19 | 2010-12-09 |  | 12d |  |  |  | 76h |
| 195 | 1.9.1 | 策划 | 1d | 2010-10-09 | 2010-10-09 | 187, 161 | 55d | 2d | start no earlier than 2010-09-15 | 姜浩 | 8h |
| 196 | 1.9.2 | 美术ui | 1d | 2010-09-19 | 2010-09-19 | 189 | 66d | 0d | start no earlier than 2010-09-19 | 赵炯 | 8h |
| 197 | 1.9.3 | 前台开发 | 1d | 2010-12-06 | 2010-12-07 | 190 | 0d |  | start no earlier than 2010-11-17 | 徐鹏 | 8h |
| 198 | 1.9.4 | 新手引导 | 1d? | 2010-12-07 | 2010-12-08 | 197 | 0d |  | start no earlier than 2010-11-16 | 徐鹏 | 8h |
| 199 | 1.9.5 | 后台开发 | 2.5d | 2010-11-03 | 2010-11-05 | 193 | 28d | 0d | finish no earlier than 2010-11-05 | 章昕 | 20h |
| 200 | 1.9.6 | 前后端联调 | 1.5d | 2010-12-08 | 2010-12-09 | 198 | 0d |  | start no earlier than 2010-11-18 | 章昕; 徐鹏 | 24h |

Notes:
- 192: 10月20~11月1日 / （新）泰服搭建 / 雅虎 维护

| ID | WBS | Task | Duration | Start | Finish | Predecessors | Total slack | Free slack | Constraint | Resources | Work |
| --- | --- | --- | --- | --- | --- | --- | --- | --- | --- | --- | --- |
| 201 | 1.10 | **技能模块** | 6d | 2010-11-08 | 2010-11-15 |  | 28d |  |  |  |  |
| 202 | 1.10.1 | 后端 | 6d | 2010-11-08 | 2010-11-15 | 199 | 28d | 0d | start no earlier than 2010-10-20 |  |  |
| 203 | 1.11 | **任务模块** | 63d? | 2010-09-20 | 2010-12-22 |  | 8d |  |  | 赵炯 | 768h |
| 204 | 1.11.1 | 策划 | 1d | 2010-10-13 | 2010-10-13 | 195 | 53d | 0d | start no earlier than 2010-10-13 | 姜浩 | 8h |
| 205 | 1.11.2 | 任务剧情 | 5d | 2010-10-14 | 2010-10-20 | 204 | 53d |  | start no earlier than 2010-10-13 | 姜浩 | 40h |
| 206 | 1.11.3 | **美术ui** | 5d | 2010-09-20 | 2010-09-27 |  | 66d |  |  | 赵炯 | 80h |
| 207 | 1.11.3.1 | 任务相关UI | 2d | 2010-09-20 | 2010-09-21 | 196 | 66d | 0d | start no earlier than 2010-09-15 | 赵炯 | 16h |
| 208 | 1.11.3.2 | 大背景图 | 3d | 2010-09-25 | 2010-09-27 | 207 | 66d |  | start no earlier than 2010-09-21 | 赵炯 | 24h |
| 209 | 1.11.4 | 前端开发 | 7d | 2010-12-10 | 2010-12-20 | 200 | 0d |  | start no earlier than 2010-11-16 | 徐鹏 | 56h |
| 210 | 1.11.5 | 后端开发 | 7d | 2010-11-16 | 2010-11-24 | 202 | 28d |  | finish no earlier than 2010-10-25 | 章昕 | 56h |
| 211 | 1.11.6 | 接口设计 | 1d? | 2010-12-21 | 2010-12-21 | 209 | 0d |  | start no earlier than 2010-11-29 | 徐鹏 | 8h |
| 212 | 1.11.7 | 测试联调 | 1d? | 2010-12-22 | 2010-12-22 | 211 | 0d |  |  | 徐鹏; 章昕 | 16h |
| 213 | 1.12 | **新手引导** | 50d? | 2010-10-26 | 2011-01-03 |  | 0d |  |  |  |  |
| 214 | 1.12.1 | **美术** | 3d? | 2010-10-26 | 2010-10-28 |  | 47d |  |  |  |  |
| 215 | 1.12.1.1 | loading画面 | 1d? | 2010-10-26 | 2010-10-26 |  | 47d | 0d | start no earlier than 2010-10-26 |  |  |
| 216 | 1.12.1.2 | 人物属性选择画面 | 2d | 2010-10-27 | 2010-10-28 | 215 | 47d |  |  |  |  |
| 217 | 1.12.2 | 前端 | 1d | 2010-12-23 | 2010-12-23 | 212 | 0d |  | start no earlier than 2010-11-29 |  |  |
| 218 | 1.12.3 | 后端 | 1d | 2010-10-29 | 2010-10-29 |  | 46d |  | start no earlier than 2010-10-29 |  |  |
| 219 | 1.12.4 | renren平台接口调试 | 1d? | 2010-12-24 | 2010-12-24 | 217 | 0d |  | start no earlier than 2010-12-01 |  |  |
| 220 | 1.12.5 | 统计模块 | 1d? | 2010-12-27 | 2010-12-27 | 219 | 0d |  |  |  |  |
| 221 | 1.12.6 | 测服上传 | 1d? | 2010-12-28 | 2010-12-28 | 220 | 0d |  |  |  |  |
| 222 | 1.12.7 | 测试 | 1d? | 2010-12-29 | 2010-12-29 | 221 | 0d |  |  |  |  |
| 223 | 1.12.8 | bug修改&游戏平衡数值调整 | 1d? | 2010-12-30 | 2010-12-30 | 222 | 0d |  |  |  |  |
| 224 | 1.12.9 | 正服配置&测试 | 1d? | 2010-12-31 | 2010-12-31 | 223 | 0d |  |  |  |  |
| 225 | 1.12.10 | 上线 | 1d? | 2011-01-03 | 2011-01-03 | 224 | 0d |  |  |  |  |

| ID | WBS | Task | Duration | Start | Finish | Total slack | Resources | Work |
| --- | --- | --- | --- | --- | --- | --- | --- | --- |
| 226 | 2 | **后续内容添加** | 1d? | 2010-08-03 | 2010-08-03 | 105d |  | 24h |
| 227 | 2.1 | **美术** | 1d? | 2010-08-03 | 2010-08-03 | 105d |  | 24h |
| 228 | 2.1.1 | 升级动效 | 1d? | 2010-08-03 | 2010-08-03 | 92.5d | 姜浩 | 8h |
| 229 | 2.1.2 | 升级面板 | 1d? | 2010-08-03 | 2010-08-03 | 92.5d | 赵炯 | 8h |
| 230 | 2.1.3 | 装饰物 | 1d? | 2010-08-03 | 2010-08-03 | 92.5d | 邓玭赵炯 | 8h |
| 231 | 2.1.4 | 开场loading 画面 | 1d? | 2010-08-03 | 2010-08-03 | 92.5d |  |  |
| 232 | 2.2 | **UI组建** | 1d? | 2010-08-03 | 2010-08-03 | 105d |  |  |
| 233 | 2.2.1 | 显示 | 1d? | 2010-08-03 | 2010-08-03 | 92.5d |  |  |
| 234 | 2.2.2 | 升级表现 | 1d? | 2010-08-03 | 2010-08-03 | 92.5d |  |  |
| 235 | 2.2.3 | 测试 | 1d? | 2010-08-03 | 2010-08-03 | 92.5d |  |  |
| 236 | 2.2.4 | 系统消息框 | 1d? | 2010-08-03 | 2010-08-03 | 92.5d |  |  |
| 237 | 2.2.5 | 动画表现 | 1d? | 2010-08-03 | 2010-08-03 | 92.5d |  |  |
| 238 | 3 | 新手引导 | 1d? | 2010-08-03 | 2010-08-03 | 105d |  |  |

Notes:
- 226: 根据模块添加内容
