Schedule from MS Project, 2010-08-03 to 2010-12-09, A marks actual dates.
微软中国

## Calendars

- 标准: Mon-Fri 08:00-12:00, 13:00-17:00; Sat-Sun off. Exceptions (off unless hours are given): 2010-09-05, 2010-09-12, 2010-09-19 08:00-12:00, 13:00-17:00, 2010-09-22 to 2010-09-24, 2010-09-25 to 2010-09-26 08:00-12:00, 13:00-17:00, 2010-10-01 to 2010-10-07, 2010-10-09 08:00-12:00, 13:00-17:00.

## Resources

| Resource |
| --- |
| 章昕 |
| 徐鹏 |
| 张琦 |
| 胡立军 |
| 姜浩 |
| 蓝雪 |
| 黄伟青 |
| 黄伟青? |
| 赵炯 |
| 邓玭赵炯 |
| 片头loading 画面 |
| 邓玭 |
| 全部组员 |
| 7788 |

## Schedule

| ID | WBS | Task | Duration | Start | Finish | Predecessors | Complete | Remaining | Total slack | Free slack | Constraint | Resources | Work |
| --- | --- | --- | --- | --- | --- | --- | --- | --- | --- | --- | --- | --- | --- |
| 1 | 1 | **快乐魔法** | 89d? | 2010-08-03 A | 2010-12-09 |  | 1% | 87.71d? | 0d |  |  |  | 1432h |
| 4 | 1.1 | **魔法技能模块** | 31d? | 2010-10-08 | 2010-11-18 |  |  |  | 15d |  |  |  | 204h |
| 5 | 1.1.1 | **前端** | 14d? | 2010-11-01 | 2010-11-18 |  |  |  | 0d |  |  |  | 156h |
| 6 | 1.1.1.1 | **变形术** | 4d? | 2010-11-01 | 2010-11-04 |  |  |  | 0d |  |  | 徐鹏 | 64h |
| 7 | 1.1.1.1.1 | 使用魔法流程 | 3d | 2010-11-01 | 2010-11-03 |  |  |  | 0d |  | start no earlier than 2010-11-01 | 徐鹏 | 24h |
| 8 | 1.1.1.1.2 | 变形术信息 | 1d? | 2010-11-04 | 2010-11-04 | 7 |  |  | 0d |  |  | 徐鹏 | 8h |
| 9 | 1.1.1.2 | **合成** | 3.5d? | 2010-11-05 | 2010-11-10 | 6 |  |  | 0d |  |  | 徐鹏 | 28h |
| 10 | 1.1.1.2.1 | 合成术信息 | 2.5d | 2010-11-05 | 2010-11-09 |  |  |  | 0d |  |  |  |  |
| 11 | 1.1.1.2.2 | 合成流程 | 1d? | 2010-11-09 | 2010-11-10 | 10 |  |  | 0d |  |  |  |  |
| 12 | 1.1.1.3 | 教学魔法 | 2d | 2010-11-10 | 2010-11-12 | 9 |  |  | 0d |  |  | 徐鹏 | 16h |
| 13 | 1.1.1.4 | 列表组件 | 2d | 2010-11-12 | 2010-11-16 | 12 |  |  | 0d |  |  | 徐鹏 | 16h |
| 14 | 1.1.1.5 | 合成/变形成功面板 | 1d? | 2010-11-16 | 2010-11-17 | 13 |  |  | 0d |  |  | 徐鹏 | 8h |
| 15 | 1.1.1.6 | 前后端联调 | 1.5d | 2010-11-17 | 2010-11-18 | 14 |  |  | 0d |  | start no earlier than 2010-11-03 | 徐鹏; 章昕 | 24h |
| 17 | 1.1.2 | **后端** | 30.5d | 2010-10-08 | 2010-11-18 |  |  |  | 15.5d |  |  |  | 48h |
| 18 | 1.1.2.1 | 合成 | 2d | 2010-10-08 | 2010-10-12 |  |  |  | 37d | 0d | finish no earlier than 2010-10-12 | 章昕 | 16h |
| 19 | 1.1.2.2 | 变化术 | 1d | 2010-10-13 | 2010-10-13 | 18 |  |  | 37d | 0d |  | 章昕 | 8h |
| 20 | 1.1.2.3 | 前后端联调 | 1.5d | 2010-11-17 | 2010-11-18 |  |  |  | 15.5d |  | start no earlier than 2010-11-17 | 章昕; 徐鹏 | 24h |
| 22 | 1.2 | **水晶交换** | 81d? | 2010-08-03 A | 2010-11-29 |  | 7% | 75d? | 8d |  |  |  | 368h |
| 23 | 1.2.1 | **策划** | 1d? | 2010-08-03 | 2010-08-03 |  |  |  | 88d |  |  |  |  |
| 24 | 1.2.1.1 | DEMO | 1d? | 2010-08-03 | 2010-08-03 |  |  |  | 88d |  |  |  |  |
| 25 | 1.2.2 | **美术** | 1d? | 2010-09-16 A | 2010-09-16 A |  | 100% |  |  |  |  |  |  |
| 26 | 1.2.2.1 | UI调整 | 1d? | 2010-09-16 A | 2010-09-16 A |  | 100% |  |  |  |  |  |  |
| 27 | 1.2.3 | **前端** | 6.5d | 2010-11-19 | 2010-11-29 |  |  |  | 0d |  |  |  | 64h |
| 28 | 1.2.3.1 | 前端 | 5d | 2010-11-19 | 2010-11-25 | 15 |  |  | 0d |  | start no earlier than 2010-10-30 | 徐鹏 | 40h |
| 29 | 1.2.3.2 | 前后端联调 | 1.5d | 2010-11-26 | 2010-11-29 | 28 |  |  | 0d |  | finish no earlier than 2010-11-12 | 徐鹏; 章昕 | 24h |

Notes:
- 9: 国庆节
- 14: 1.得到道具 / 2.确认关闭
- 18: 调休一天 10月9日
- 26: 后续可能有修改

| ID | WBS | Task | Duration | Start | Finish | Predecessors | Total slack | Free slack | Constraint | Resources | Work |
| --- | --- | --- | --- | --- | --- | --- | --- | --- | --- | --- | --- |
| 31 | 1.2.4 | **后端** | 33d? | 2010-10-14 | 2010-11-29 |  | 8d |  |  | 章昕 | 304h |
| 32 | 1.2.4.1 | 发布和交换 | 1d | 2010-10-14 | 2010-10-14 | 19 | 45d | 0d | start no earlier than 2010-10-08 | 章昕 | 8h |
| 33 | 1.2.4.2 | 扩展 | 1d? | 2010-10-15 | 2010-10-15 | 32 | 45d | 0d |  | 章昕 | 8h |
| 34 | 1.2.4.3 | 时效过后自动回退 | 1d? | 2010-10-18 | 2010-10-18 | 33 | 45d | 0d | start no earlier than 2010-10-11 | 章昕 | 8h |
| 37 | 1.3 | **好友交互模块** | 53d | 2010-09-14 | 2010-12-01 |  | 6d |  |  | 章昕 | 736h |
| 38 | 1.3.1 | 美术ui | 2d | 2010-09-14 | 2010-09-15 |  | 57d |  | start no earlier than 2010-09-14 |  | 16h |
| 39 | 1.3.2 | 前台开发 | 1d | 2010-11-29 | 2010-11-30 | 29 | 0d |  | start no earlier than 2010-11-09 | 徐鹏 | 8h |
| 40 | 1.3.3 | **后台开发** | 32d | 2010-10-19 | 2010-12-01 |  | 6d |  |  | 章昕 | 288h |
| 41 | 1.3.3.1 | 解除好友异常魔法状态 | 1d | 2010-10-19 | 2010-10-19 | 34 | 45d |  | start no earlier than 2010-10-12 | 章昕 | 8h |
| 42 | 1.3.3.2 | 前后端联调 | 1.5d | 2010-11-30 | 2010-12-01 | 39 | 0d |  | finish no earlier than 2010-11-16 | 章昕; 徐鹏 | 24h |
| 44 | 1.4 | **道具商店模块** | 85.5d? | 2010-08-03 | 2010-12-06 |  | 3.5d |  |  |  | 44h |
| 45 | 1.4.1 | demo | 1d? | 2010-08-03 | 2010-08-03 |  | 88d |  |  |  |  |
| 46 | 1.4.2 | 前台开发 | 2.5d | 2010-12-02 | 2010-12-06 | 42 | 0d |  | start no earlier than 2010-11-10 | 徐鹏 | 20h |
| 47 | 1.4.3 | **后台开发** | 1.5d? | 2010-10-22 | 2010-10-25 |  | 24.5d |  |  | 章昕 | 24h |
| 48 | 1.4.3.1 | 商店购买 | 1d? | 2010-10-22 | 2010-10-22 |  | 24.5d | 0d | start no earlier than 2010-10-22 | 章昕 | 8h |
| 49 | 1.4.3.2 | 药水使用 | 0.5d | 2010-10-25 | 2010-10-25 | 48 | 25.5d | 0d |  | 章昕 | 4h |
| 50 | 1.5 | **消息日志模块** | 58d? | 2010-09-15 | 2010-12-09 |  | 0d |  |  |  | 80h |
| 51 | 1.5.1 | 策划 | 1d | 2010-09-15 | 2010-09-15 |  | 57d |  | start no earlier than 2010-09-15 | 姜浩 | 8h |
| 52 | 1.5.2 | 美术ui | 1d | 2010-09-19 | 2010-09-19 |  | 54d |  | start no earlier than 2010-09-19 | 赵炯 | 8h |
| 53 | 1.5.3 | 前台开发 | 1d | 2010-12-06 | 2010-12-07 | 46 | 0d |  | start no earlier than 2010-11-17 | 徐鹏 | 8h |
| 54 | 1.5.4 | 新手引导 | 1d? | 2010-12-07 | 2010-12-08 | 53 | 0d |  | start no earlier than 2010-11-16 | 徐鹏 | 8h |
| 56 | 1.5.5 | 前后端联调 | 1.5d | 2010-12-08 | 2010-12-09 | 54 | 0d |  | start no earlier than 2010-11-18 | 章昕; 徐鹏 | 24h |
| 57 | 1.6 | 技能模块 | 6d | 2010-10-28 | 2010-11-05 |  | 24.5d |  |  |  |  |
| 59 | 1.7 | **新手引导** | 25d? | 2010-10-26 | 2010-11-29 |  | 8d |  |  |  |  |
| 60 | 1.7.1 | **美术** | 3d? | 2010-10-26 | 2010-10-28 |  | 30d |  |  |  |  |
| 61 | 1.7.1.1 | loading画面 | 1d? | 2010-10-26 | 2010-10-26 |  | 30d | 0d | start no earlier than 2010-10-26 |  |  |
| 62 | 1.7.1.2 | 人物属性选择画面 | 2d | 2010-10-27 | 2010-10-28 | 61 | 30d |  |  |  |  |
| 63 | 1.7.2 | 前端 | 1d | 2010-11-29 | 2010-11-29 |  | 1d |  | start no earlier than 2010-11-29 |  |  |
| 64 | 1.7.3 | 后端 | 1d | 2010-10-29 | 2010-10-29 |  | 29d |  | start no earlier than 2010-10-29 |  |  |
| 69 | 1.8 | renren平台接口调试 | 1d? | 2010-12-01 | 2010-12-01 | 63 | 0d |  | start no earlier than 2010-12-01 |  |  |
| 70 | 1.9 | 统计模块 | 1d? | 2010-12-02 | 2010-12-02 | 69 | 0d |  |  |  |  |
| 71 | 1.10 | 测服上传 | 1d? | 2010-12-03 | 2010-12-03 | 70 | 0d |  |  |  |  |
| 72 | 1.11 | 测试 | 1d? | 2010-12-06 | 2010-12-06 | 71 | 0d |  |  |  |  |
| 73 | 1.12 | bug修改&游戏平衡数值调整 | 1d? | 2010-12-07 | 2010-12-07 | 72 | 0d |  |  |  |  |
| 74 | 1.13 | 正服配置&测试 | 1d? | 2010-12-08 | 2010-12-08 | 73 | 0d |  |  |  |  |
| 75 | 1.14 | 上线 | 1d? | 2010-12-09 | 2010-12-09 | 74 | 0d |  |  |  |  |
